# Assignment 1

Schedule from MS Project, 2022-09-12 to 2023-03-01.

## Calendars

- Standard: Mon-Fri 08:00-12:00, 13:00-17:00; Sat-Sun off.

## Resources

| Resource |
| --- |
| PM1 |
| PM2 |
| RE701 |
| RE2 |
| RE707 |
| RE8 |
| RE10 |
| RE12 |
| SE701 |
| SE2 |
| SE5 |
| SE706 |
| SE12 |
| PE701 |
| PE2 |
| PE723 |
| PE27 |
| PE28 |
| PE30 |
| TE41 |
| TE44 |
| TE47 |
| TE48 |
| DE2 |
| DE3 |
| DE7 |
| DE10 |
| DE12 |

## Schedule

| ID | WBS | Task | Duration | Start | Finish | Predecessors | Total slack | Resources | Work |
| --- | --- | --- | --- | --- | --- | --- | --- | --- | --- |
| 1 | 1 | **Project Plan** | 2.91d | 2022-09-12 | 2022-09-14 |  | 0d |  | 56.4h |
| 2 | 1.1 | Write Plan | 1.08d | 2022-09-12 | 2022-09-13 |  | 0d | PM1 | 8.64h |
| 3 | 1.2 | **Review Plan** | 1.26d | 2022-09-13 | 2022-09-14 | 2 | 0d |  | 43.2h |
| 4 | 1.2.1 | Preparation for Review | 1.08d | 2022-09-13 | 2022-09-14 | 2 | 0d | DE2; PE2; RE2; SE2 | 34.56h |
| 5 | 1.2.2 | Review Meeting | 0.18d | 2022-09-14 | 2022-09-14 | 4 | 0d | DE2; PE2; PM1; RE2; SE2; TE41 | 8.64h |
| 6 | 1.3 | Rework | 0.57d | 2022-09-14 | 2022-09-14 | 5 | 0d | PM1 | 4.56h |
| 8 | 2 | **Requirement** | 7.91d | 2022-09-14 | 2022-09-26 | 6 | 0d |  | 297.92h |
| 9 | 2.1 | Write requirements | 5.83d | 2022-09-14 | 2022-09-22 | 6 | 0d | RE2; RE8; RE10; RE12; RE701 | 233.04h |
| 10 | 2.2 | **Review Requirements/Use Case Model** | 1.29d | 2022-09-22 | 2022-09-26 | 9 | 0d |  | 45.68h |
| 11 | 2.2.1 | Preparation for review | 0.73d | 2022-09-22 | 2022-09-23 | 9 | 0d | DE2; PE2; SE2; TE41 | 23.28h |
| 12 | 2.2.2 | Review Meeting | 0.56d | 2022-09-23 | 2022-09-26 | 11 | 0d | DE2; PE2; RE2; SE2; TE41 | 22.4h |
| 13 | 2.3 | Rework | 0.8d | 2022-09-26 | 2022-09-26 | 12 | 0d | RE2; RE8; RE10 | 19.2h |
| 15 | 3 | **Analysis** | 1.7d | 2022-09-26 | 2022-09-28 | 13 | 0d |  | 47.28h |
| 16 | 3.1 | Write Analysis Document | 0.58d | 2022-09-26 | 2022-09-27 | 13 | 0d | SE2; SE5; SE12 | 14h |
| 17 | 3.2 | **Review Analysis Document** | 0.79d | 2022-09-27 | 2022-09-28 | 16 | 0d |  | 28.08h |
| 18 | 3.2.1 | Preparation for Analysis Document | 0.44d | 2022-09-27 | 2022-09-27 | 16 | 0d | DE2; PE2; RE2; TE41 | 14h |
| 19 | 3.2.2 | Review Meeting | 0.35d | 2022-09-27 | 2022-09-28 | 18 | 0d | DE2; PE2; RE2; SE2; TE41 | 14.08h |
| 20 | 3.3 | Rework | 0.33d | 2022-09-28 | 2022-09-28 | 19 | 0d | SE2; SE5 | 5.2h |
| 22 | 4 | **Design** | 11.07d | 2022-09-28 | 2022-10-13 | 20 | 0d |  | 361.68h |
| 23 | 4.1 | Write Design Document | 1.11d | 2022-09-28 | 2022-09-29 | 20 | 0d | SE2; SE5; SE12; SE701 | 35.6h |
| 24 | 4.2 | **Review Design Document** | 1.67d | 2022-09-29 | 2022-10-03 | 23 | 0d |  | 57.84h |
| 25 | 4.2.1 | Preparation for Design Document | 1.11d | 2022-09-29 | 2022-09-30 | 23 | 0d | PE28; RE10; TE47; DE12 | 35.6h |
| 26 | 4.2.2 | Review Meeting | 0.56d | 2022-09-30 | 2022-10-03 | 25 | 0d | PE28; RE10; SE12; TE47; DE12 | 22.24h |
| 27 | 4.3 | Rework | 0.97d | 2022-10-03 | 2022-10-04 | 26 | 0d | SE2; SE5; SE12; SE701 | 31.04h |
| 28 | 4.4 | Write Data Model | 4.06d | 2022-10-04 | 2022-10-10 | 27 | 0d | DE2; DE3; DE7; DE10 | 130h |

| ID | WBS | Task | Duration | Start | Finish | Predecessors | Total slack | Free slack | Resources | Work |
| --- | --- | --- | --- | --- | --- | --- | --- | --- | --- | --- |
| 29 | 4.5 | **Review Data Model** | 2.75d | 2022-10-10 | 2022-10-13 | 28 | 0d |  |  | 94.96h |
| 30 | 4.5.1 | Preparation for review | 1.85d | 2022-10-10 | 2022-10-12 | 28 | 0d |  | PE2; RE2; SE2; TE41 | 59.36h |
| 31 | 4.5.2 | Review Meeting | 0.89d | 2022-10-12 | 2022-10-13 | 30 | 0d |  | DE2; PE2; RE2; SE2; TE41 | 35.6h |
| 32 | 4.6 | Rework | 0.51d | 2022-10-13 | 2022-10-13 | 31 | 0d |  | DE2; DE3; DE7 | 12.24h |
| 34 | 5 | **Coding and unit test** | 43.22d | 2022-10-13 | 2022-12-13 | 32 | 0d |  |  | 1749.92h |
| 35 | 5.1 | Write Code | 14.7d | 2022-10-13 | 2022-11-03 | 32 | 0d |  | PE2; PE27; PE28; PE30; PE701; PE723 | 705.52h |
| 36 | 5.2 | **Unit Testing** | 24.39d | 2022-11-03 | 2022-12-07 | 35 | 0d |  |  | 922.08h |
| 37 | 5.2.1 | Prepare/Execute Test Cases | 8.28d | 2022-11-03 | 2022-11-15 | 35 | 0d |  | PE2; PE27; PE28; PE30; PE701 | 331.2h |
| 38 | 5.2.2 | Fix Found Defects | 9.4d | 2022-11-15 | 2022-11-28 | 37 | 0d |  | PE2; PE27; PE28; PE30; PE701 | 376h |
| 39 | 5.2.3 | Test Fixed Defects | 6.71d | 2022-11-28 | 2022-12-07 | 38 | 0d |  | PE2; PE27; PE28; PE30 | 214.88h |
| 40 | 5.3 | **Code Inspection** | 4.12d | 2022-12-07 | 2022-12-13 | 39 | 0d |  |  | 122.32h |
| 41 | 5.3.1 | Preparation for Code Inspection | 1.47d | 2022-12-07 | 2022-12-09 | 39 | 0d |  | DE2; RE2; SE2; TE41 | 47.04h |
| 42 | 5.3.2 | Code Inspection Meeting | 0.71d | 2022-12-09 | 2022-12-12 | 41 | 0d |  | DE2; PE2; RE2; SE2; TE41 | 28.24h |
| 43 | 5.3.3 | Rework | 1.47d | 2022-12-12 | 2022-12-13 | 42 | 0d |  | PE2; PE27; PE28; PE30 | 47.04h |
| 45 | 6 | **Testing** | 55.58d | 2022-12-13 | 2023-03-01 | 13, 43 | 0d |  |  | 1521.36h |
| 46 | 6.1 | Write test plan(TP) | 7.43d | 2022-12-13 | 2023-02-14 | 13 | 0d |  | TE41; TE44; TE47; TE48 | 218.32h |
| 47 | 6.2 | **Review TP** | 10.89d | 2023-02-14 | 2023-03-01 | 46 | 0d |  |  | 104.64h |
| 48 | 6.2.1 | Preparation for TP | 2.39d | 2023-02-14 | 2023-02-24 | 46 | 0d |  | DE2; PE2; RE2; SE2 | 38.24h |
| 49 | 6.2.2 | Review TP Meeting | 0.48d | 2023-02-24 | 2023-02-27 | 48 | 0d |  | DE2; PE2; RE2; SE2; TE41 | 19.12h |
| 50 | 6.2.3 | Rework | 1.97d | 2023-02-27 | 2023-03-01 | 49 | 0d |  | TE41; TE44; TE47 | 47.28h |
| 51 | 6.3 | Execute TP(test cases) | 11.2d | 2022-12-13 | 2022-12-29 | 43 | 13.49d | 0d | TE41; TE44; TE47; TE48 | 358.4h |
| 52 | 6.4 | Fix Found Defects | 17.5d | 2022-12-29 | 2023-01-23 | 51 | 13.49d | 0d | TE41; TE44; TE47; TE48 | 560h |
| 53 | 6.5 | Test Fixed Defects | 8.75d | 2023-01-23 | 2023-02-03 | 52 | 13.49d | 0d | TE41; TE44; TE47; TE48 | 280h |
| 55 | 7 | **Documentation** | 4.65d | 2023-02-03 | 2023-02-09 | 13, 53 | 13.49d |  |  | 111.36h |
| 56 | 7.1 | User Documentation | 2.31d | 2023-02-03 | 2023-02-07 | 13, 53 | 13.49d | 0d | DE2; DE3; DE7; DE10 | 48.72h |

| ID | WBS | Task | Duration | Start | Finish | Predecessors | Total slack | Free slack | Resources | Work |
| --- | --- | --- | --- | --- | --- | --- | --- | --- | --- | --- |
| 57 | 7.2 | **Review UD** | 2.33d | 2023-02-07 | 2023-02-09 | 56 | 13.49d |  |  | 62.64h |
| 58 | 7.2.1 | Preparation for UD Review | 1.11d | 2023-02-07 | 2023-02-08 | 56 | 13.49d | 0d | PE27; RE8; SE5; TE44 | 19.52h |
| 59 | 7.2.2 | Review UD Meeting | 0.49d | 2023-02-08 | 2023-02-09 | 58 | 13.49d | 0d | DE2; PE2; RE2; SE2; TE41 | 19.52h |
| 60 | 7.2.3 | Rework | 0.74d | 2023-02-09 | 2023-02-09 | 59 | 13.49d |  | DE2; DE3; DE7; DE10 | 23.6h |
