# Assignment2

Schedule from MS Project, 2022-09-27 to 2023-04-24.

## Calendars

- Standard: Mon-Fri 08:00-12:00, 13:00-17:00; Sat-Sun off.

## Resources

| Resource |
| --- |
| PM9 |
| RE707 |
| RE791 |
| RE792 |
| RE793 |
| SE701 |
| SE706 |
| SE12 |
| SE592 |
| SE593 |
| PE701 |
| PE723 |
| PE30 |
| P6854 |
| PE656 |
| TE41 |
| TE44 |
| TE47 |
| TE48 |
| TE752 |
| TE754 |
| DE7 |
| DE10 |
| DE12 |
| DE762 |
| DE763 |
| DE764 |

## Schedule

| ID | WBS | Task | Duration | Start | Finish | Predecessors | Total slack | Free slack | Resources | Work |
| --- | --- | --- | --- | --- | --- | --- | --- | --- | --- | --- |
| 1 | 1 | **Assignment 2** | 149.53d | 2022-09-27 | 2023-04-24 |  | 0d |  |  | 4832.56h |
| 2 | 1.1 | **Project plan** | 6.68d | 2022-09-27 | 2022-10-05 |  | 0d |  |  | 85.92h |
| 3 | 1.1.1 | Write Plan | 3.84d | 2022-09-27 | 2022-09-30 |  | 0d |  | PM9 | 30.72h |
| 4 | 1.1.2 | **Review Plan** | 0.94d | 2022-09-30 | 2022-10-03 | 3 | 0d |  |  | 40h |
| 5 | 1.1.2.1 | Preparation for Review | 0.62d | 2022-09-30 | 2022-10-03 | 3 | 0d |  | DE764; P6854; RE793; SE706; TE754 | 24.64h |
| 6 | 1.1.2.2 | Review Meeting | 0.32d | 2022-10-03 | 2022-10-03 | 5 | 0d |  | DE764; P6854; PM9; RE793; SE706; TE754 | 15.36h |
| 7 | 1.1.3 | Rework | 1.9d | 2022-10-03 | 2022-10-05 | 6 | 0d |  | PM9 | 15.2h |
| 8 | 1.2 | **Requirement** | 9.29d | 2022-10-05 | 2022-10-18 | 7 | 0d |  |  | 309.2h |
| 9 | 1.2.1 | Write Requirements | 2.99d | 2022-10-05 | 2022-10-10 | 7 | 0d |  | RE793; RE792; RE791; RE707 | 95.6h |
| 10 | 1.2.2 | **Review Requirements** | 4.48d | 2022-10-10 | 2022-10-17 | 9 | 0d |  |  | 155.36h |
| 11 | 1.2.2.1 | Preparation for Review | 2.99d | 2022-10-10 | 2022-10-13 | 9 | 0d |  | DE764; P6854; SE706; TE754 | 95.6h |
| 12 | 1.2.2.2 | Review Meeting | 1.49d | 2022-10-13 | 2022-10-17 | 11 | 0d |  | DE764; P6854; RE793; SE706; TE754 | 59.76h |
| 13 | 1.2.3 | Rework | 1.82d | 2022-10-17 | 2022-10-18 | 12 | 0d |  | RE707; RE791; RE792; RE793 | 58.24h |
| 14 | 1.3 | **Lab and Environment Setup** | 21.35d | 2022-10-18 | 2022-11-17 | 13 | 52.16d |  |  | 267.2h |
| 15 | 1.3.1 | **Hardware** | 12.97d | 2022-10-18 | 2022-11-04 | 13 | 52.16d |  |  | 205.6h |
| 16 | 1.3.1.1 | **Install Network Elements** | 5.07d | 2022-10-18 | 2022-10-26 | 13 | 52.16d |  |  | 56h |
| 17 | 1.3.1.1.1 | Routers | 0.88d | 2022-10-18 | 2022-10-19 | 13 | 52.16d | 0d | SE701; SE593; SE592; SE12 | 28h |
| 18 | 1.3.1.1.2 | Bridge | 1.69d | 2022-10-24 | 2022-10-26 | 17 | 54.29d | 0d | SE706; SE701; SE593; SE592 | 28h |
| 19 | 1.3.1.2 | Install Server | 5.95d | 2022-10-26 | 2022-11-02 | 18 | 54.29d | 0d | SE706; SE701; SE593; SE592 | 120h |
| 20 | 1.3.1.3 | Install Clients | 1.67d | 2022-11-02 | 2022-11-04 | 19 | 54.29d | 0d | SE706; SE701; SE593; SE592 | 29.6h |
| 21 | 1.3.2 | **Software** | 8.38d | 2022-11-04 | 2022-11-17 | 20 | 112.21d |  |  | 61.6h |
| 22 | 1.3.2.1 | Install Development Tools | 0.91d | 2022-11-04 | 2022-11-10 | 20 | 112.21d | 0d | SE706; SE701; SE593; SE592 | 25.6h |
| 23 | 1.3.2.2 | Install Testing Tools | 3.38d | 2022-11-10 | 2022-11-17 | 22 | 112.21d |  | SE706; SE701; SE593; SE592 | 36h |
| 24 | 1.4 | **Analysis/Design Document** | 13.35d | 2022-10-18 | 2022-11-07 | 13 | 0d |  |  | 219.36h |
| 25 | 1.4.1 | Write DD | 3.37d | 2022-10-18 | 2022-10-24 | 13 | 0d |  | SE706; SE592; SE593; SE701 | 81.04h |

| ID | WBS | Task | Duration | Start | Finish | Predecessors | Total slack | Free slack | Resources | Work |
| --- | --- | --- | --- | --- | --- | --- | --- | --- | --- | --- |
| 26 | 1.4.2 | **Review DD** | 6.91d | 2022-10-24 | 2022-11-02 | 25 | 0d |  |  | 97.2h |
| 27 | 1.4.2.1 | Preparation for DD | 2.02d | 2022-10-24 | 2022-10-26 | 25 | 0d |  | DE764; P6854; RE793; TE754 | 64.8h |
| 28 | 1.4.2.2 | Review Meeting | 2.28d | 2022-10-26 | 2022-11-02 | 27 | 0d |  | DE764; P6854; RE793; SE706; TE754 | 32.4h |
| 29 | 1.4.3 | Rework | 2.7d | 2022-11-02 | 2022-11-07 | 28 | 0d |  | SE706; SE701; SE593; SE592; SE12 | 41.12h |
| 30 | 1.5 | **Data Model** | 9.43d | 2022-11-07 | 2022-11-21 | 29 | 0d |  |  | 156.16h |
| 31 | 1.5.1 | Create Data Model | 4.09d | 2022-11-07 | 2022-11-16 | 29 | 0d |  | SE706; SE701; SE593; SE592 | 91.04h |
| 32 | 1.5.2 | **Review Data Model** | 1.95d | 2022-11-16 | 2022-11-18 | 31 | 0d |  |  | 27.36h |
| 33 | 1.5.2.1 | Preparation for DM | 0.57d | 2022-11-16 | 2022-11-16 | 31 | 0d |  | DE764; P6854; RE793; TE754 | 18.24h |
| 34 | 1.5.2.2 | Review Meeting | 0.46d | 2022-11-16 | 2022-11-18 | 33 | 0d |  | DE764; P6854; RE793; TE754; SE701 | 9.12h |
| 35 | 1.5.3 | Rework | 1.02d | 2022-11-18 | 2022-11-21 | 34 | 0d |  | SE706; SE701; SE593; SE592; SE12 | 37.76h |
| 36 | 1.6 | **Coding and Unit test** | 94.28d | 2022-11-21 | 2023-03-31 | 35 | 0d |  |  | 2339.44h |
| 37 | 1.6.1 | Write code | 44.06d | 2022-11-21 | 2023-01-20 | 35 | 0d |  | PE723; P6854; PE701; PE656; PE30 | 1265.04h |
| 38 | 1.6.2 | **Unit Testing** | 41.67d | 2023-01-20 | 2023-03-20 | 20, 37 | 0d |  |  | 865.36h |
| 39 | 1.6.2.1 | Prepare/Execute Test Cases | 2.86d | 2023-01-20 | 2023-01-25 | 20, 37 | 0d |  | P6854; PE723; PE701; PE656; PE30 | 114.4h |
| 40 | 1.6.2.2 | Fix Found Defects | 20.38d | 2023-01-25 | 2023-02-22 | 39 | 0d |  | P6854; PE723; PE701; PE656; PE30 | 409.6h |
| 41 | 1.6.2.3 | Test Fixed Defects | 10.4d | 2023-02-22 | 2023-03-20 | 40 | 0d |  | P6854; PE723; PE701; PE656; PE30 | 341.36h |
| 42 | 1.6.3 | **Code Inspection** | 8.55d | 2023-03-20 | 2023-03-31 | 41 | 0d |  |  | 209.04h |
| 43 | 1.6.3.1 | Preparation for Code Inspection | 1.36d | 2023-03-20 | 2023-03-22 | 41 | 0d |  | DE764; RE793; SE706; TE754 | 43.6h |
| 44 | 1.6.3.2 | Code Inspection Meeting | 0.88d | 2023-03-22 | 2023-03-23 | 43 | 0d |  | DE764; P6854; RE793; SE706; TE754 | 35.12h |
| 45 | 1.6.3.3 | Rework | 6.31d | 2023-03-23 | 2023-03-31 | 44 | 0d |  | P6854; PE723; PE701; PE656; PE30 | 130.32h |
| 46 | 1.7 | **Testing** | 133.56d | 2022-10-18 | 2023-04-24 | 13 | 0d |  |  | 999.84h |
| 47 | 1.7.1 | Write test plan(TP) | 13.69d | 2022-10-18 | 2022-11-07 | 13 | 111.62d | 0d | TE754; TE752; TE48; TE47; TE44; TE41 | 409.6h |
| 48 | 1.7.2 | **Review TP** | 8.25d | 2022-11-07 | 2022-11-17 | 47 | 111.62d |  |  | 113.6h |
| 49 | 1.7.2.1 | Preparation for TP | 3.2d | 2022-11-07 | 2022-11-14 | 47 | 111.62d | 0d | DE764; P6854; RE793; SE706 | 51.2h |
| 50 | 1.7.2.2 | Review TP Meeting | 1.28d | 2022-11-14 | 2022-11-16 | 49 | 111.62d | 0d | DE764; P6854; RE793; SE706; TE754 | 25.6h |
| 51 | 1.7.2.3 | Rework | 1.23d | 2022-11-16 | 2022-11-17 | 50 | 111.62d |  | TE754; TE752; TE48; TE47 | 36.8h |
| 52 | 1.7.3 | Execute TP(test cases) | 12.09d | 2023-03-31 | 2023-04-18 | 45 | 0d |  | TE754; TE752; TE48; TE47; TE44; TE41 | 316.64h |
| 53 | 1.7.4 | Fix Found Defects | 4d | 2023-04-18 | 2023-04-24 | 52 | 0d |  | P6854; PE723; PE701; PE656; PE30 | 160h |

| ID | WBS | Task | Duration | Start | Finish | Predecessors | Total slack | Free slack | Resources | Work |
| --- | --- | --- | --- | --- | --- | --- | --- | --- | --- | --- |
| 54 | 1.8 | **Documentation** | 8.05d | 2022-10-18 | 2022-10-31 | 13 | 111.82d |  |  | 170.32h |
| 55 | 1.8.1 | User Documentation | 1.33d | 2022-10-18 | 2022-10-20 | 13 | 111.82d | 0d | DE764; DE763; DE762; DE12; DE10 | 53.04h |
| 56 | 1.8.2 | **Review UD** | 6.72d | 2022-10-20 | 2022-10-31 | 55 | 111.82d |  |  | 117.28h |
| 57 | 1.8.2.1 | Preparation for UD review meeting | 2.86d | 2022-10-20 | 2022-10-25 | 55 | 111.82d | 0d | P6854; RE793; SE706; TE754 | 53.04h |
| 58 | 1.8.2.2 | Review UD Meeting | 1.66d | 2022-10-26 | 2022-10-27 | 57 | 111.82d | 0d | DE764; P6854; RE793; SE706; TE754 | 26.48h |
| 59 | 1.8.2.3 | Rework | 1.18d | 2022-10-27 | 2022-10-31 | 58 | 111.82d | 0d | DE764; DE763; DE762; DE12 | 37.76h |
| 60 | 1.9 | **Training** | 13.69d | 2022-10-31 | 2022-11-17 | 59 | 111.82d |  |  | 285.12h |
| 61 | 1.9.1 | Training Handouts(TH) | 4.38d | 2022-10-31 | 2022-11-04 | 59 | 111.82d | 0d | DE764; DE763; DE762; DE12; DE10; DE7 | 210h |
| 62 | 1.9.2 | **Review Training Handouts(TH)** | 9.32d | 2022-11-04 | 2022-11-17 | 61 | 111.82d |  |  | 75.12h |
| 63 | 1.9.2.1 | Preparation for TH review meeting | 1.85d | 2022-11-04 | 2022-11-10 | 61 | 111.82d | 0d | P6854; RE793; SE706; TE754 | 26.24h |
| 64 | 1.9.2.2 | Review TH Meeting | 1.05d | 2022-11-10 | 2022-11-16 | 63 | 111.82d | 0d | DE764; P6854; RE793; SE706; TE754 | 21.04h |
| 65 | 1.9.2.3 | Rework | 1.59d | 2022-11-16 | 2022-11-17 | 64 | 111.82d |  | DE764; DE763; DE762; DE12 | 27.84h |
